# QuickMart

Schedule from MS Project, 2024-10-30 to 2025-03-17, status date 2024-12-21, costs in $, A marks actual dates.

## Calendars

- Copy of Standard: Mon-Fri 08:00-12:00, 13:00-17:00; Sat-Sun off.

## Resources

| Resource | Unit | Rate | Notes |
| --- | --- | --- | --- |
| Project Manager |  | 7.37 |  |
| Business Analyst |  | 4.25 |  |
| UI Designers |  | 2.37 | this team cosist of 5 member each member has 50% max capacity because they freelancer and work at other project |
| Quality Assurance tester |  | 1.67 |  |
| Backend Developers |  | 2.4 |  |
| Database Administrator |  | 2.29 |  |
| IoT Specialist |  | 2.46 |  |
| Frontend Developers |  | 0.99 | i have 2 frond-end developers are freelancer and do another project at the same time so each developer give us 50% from their capacity / so the maximum capacity is 100% |
| DevOps Engineer |  | 35.06 |  |
| System Administrator |  | 2.73 | * .; ; ·;; ⦁70-80% utilization is more sustainable, allowing for handling unexpected issues or downtime. |
| Marketing Team |  | 2.85 | has 3 member are freelancer to do a marketing team soeach member 50% because they work at another project |
| IT Specialist |  | 0.3 | Leaves room for handling emergencies, improving systems, and learning new technologies. |
| Barcode Scanners | each | 200 |  |
| Plastic Bags | pack | 10 |  |
| Signage | piece | 50 |  |
| Software Licensing Fees |  |  |  |
| Maintenance Contracts |  |  |  |
| Marketing Campaigns |  |  |  |
| UX Designers |  | 1.16 | this team cosist of 5 member each member has 50% max capacity because they freelancer and work at other project |
| Security Spaecialist |  | 70 |  |
| mobile app developer |  | 60 | this task consist of 2 memeber of them for app store and other for play store |

## Schedule

| ID | WBS | Task | Type | Duration | Start | Finish | Predecessors | Complete | Remaining | Baseline start | Baseline finish | Baseline duration | Total slack | Constraint | Resources | Work | Actual work | Cost | Baseline cost | Actual cost |
| --- | --- | --- | --- | --- | --- | --- | --- | --- | --- | --- | --- | --- | --- | --- | --- | --- | --- | --- | --- | --- |
| 1 | 1 | QuickMart | manual | 1d | 2024-10-30 A | 2024-10-30 A |  | 100% |  | 2024-10-30 | 2024-10-30 | 1d |  |  |  |  |  |  |  |  |
| 2 | 2 | **UI/UX Design alaysis** |  | 22d | 2024-10-30 A | 2024-11-28 |  | 99% | 0d | 2024-10-30 | 2024-11-28 | 22d | 0d |  |  | 304h | 274.67h | 487.4 | 487.4 | 453.45 |
| 3 | 2.1 | **User interface Design** |  | 7d | 2024-11-20 A | 2024-11-28 A | 6 | 100% |  | 2024-11-20 | 2024-11-28 | 7d |  |  | UI Designers | 112h | 112h | 265.16 | 265.16 | 265.16 |
| 4 | 2.1.1 | Detialed Design Previews |  | 5d | 2024-11-24 A | 2024-11-28 A | 5 | 100% |  | 2024-11-24 | 2024-11-28 | 5d |  |  | UI Designers | 40h | 40h | 94.7 | 94.7 | 94.7 |
| 5 | 2.1.2 | Information Architecture |  | 2d | 2024-11-20 A | 2024-11-21 A |  | 100% |  | 2024-11-20 | 2024-11-21 | 2d |  |  | UI Designers | 16h | 16h | 37.88 | 37.88 | 37.88 |
| 6 | 2.2 | **User Experience Design** |  | 12d | 2024-10-30 A | 2024-11-14 |  | 99% | 0d | 2024-10-30 | 2024-11-14 | 12d | 0d |  | UX Designers | 192h | 162.67h | 222.24 | 222.24 | 188.29 |
| 7 | 2.2.1 | User journey mapping |  | 5d | 2024-10-30 A | 2024-11-05 A |  | 100% |  | 2024-10-30 | 2024-11-05 | 5d |  | start no earlier than 2024-10-30 | UX Designers | 40h | 40h | 46.3 | 46.3 | 46.3 |
| 8 | 2.2.2 | Wireframes |  | 2d | 2024-11-13 A | 2024-11-14 A | 9 | 100% |  | 2024-11-13 | 2024-11-14 | 2d |  |  | UX Designers | 16h | 16h | 18.52 | 18.52 | 18.52 |
| 9 | 2.2.3 | User flow Diagram |  | 5d | 2024-11-06 A | 2024-11-12 A | 7 | 100% |  | 2024-11-06 | 2024-11-12 | 5d |  |  | UX Designers | 40h | 40h | 46.3 | 46.3 | 46.3 |
| 10 | 3 | ui/ux design completion | milestone | 0d | 2024-10-30 A | 2024-10-30 A |  | 100% |  | 2024-10-30 | 2024-10-30 | 0d |  |  |  |  |  |  |  |  |
| 11 | 4 | **Implementation** |  | 29d? | 2024-12-01 A | 2025-01-09 | 10 | 59% | 11.76d? | 2024-12-01 | 2025-01-09 | 29d? | 0d |  |  | 775.6h | 460.8h | 6,892.51 | 6,892.51 | 3,390.08 |
| 12 | 4.1 | **Backend** |  | 19d | 2024-12-01 A | 2024-12-26 |  | 81% | 3.52d | 2024-12-01 | 2024-12-26 | 19d | 0d |  |  | 555.6h | 460.8h | 4,710.18 | 4,710.18 | 3,390.08 |
| 13 | 4.1.1 | **Database Design** |  | 6d | 2024-12-01 A | 2024-12-09 A |  | 100% |  | 2024-12-01 | 2024-12-09 | 6d |  |  |  | 174.8h | 174.8h | 502.99 | 502.99 | 502.99 |
| 14 | 4.1.1.1 | Product database |  | 5d | 2024-12-01 A | 2024-12-05 A |  | 100% |  | 2024-12-01 | 2024-12-05 | 5d |  |  | Database Administrator; Backend Developers; Business Analyst | 120h | 120h | 357.82 | 357.82 | 357.82 |
| 15 | 4.1.1.2 | User database |  | 1d | 2024-12-08 A | 2024-12-08 A | 14 | 100% |  | 2024-12-08 | 2024-12-08 | 1d |  |  | Backend Developers; Business Analyst; Database Administrator; IT Specialist [85%] | 30.8h | 30.8h | 73.6 | 73.6 | 73.6 |
| 16 | 4.1.1.3 | Transaction history |  | 1d | 2024-12-09 A | 2024-12-09 A | 15 | 100% |  | 2024-12-09 | 2024-12-09 | 1d |  |  | Backend Developers; Business Analyst; Database Administrator | 24h | 24h | 71.56 | 71.56 | 71.56 |
| 17 | 4.1.2 | **ioT** |  | 15d | 2024-12-01 A | 2024-12-22 |  | 94% | 0.94d | 2024-12-01 | 2024-12-22 | 15d | 0d |  |  | 307.2h | 286h | 2,940.47 | 2,940.47 | 2,887.09 |
| 18 | 4.1.2.1 | sensors gates |  | 8d | 2024-12-11 A | 2024-12-22 | 19 | 88% | 1d | 2024-12-11 | 2024-12-22 | 8d | 0d |  | Backend Developers; IoT Specialist [85%]; System Administrator [80%] | 169.6h | 148.4h | 427.03 | 427.03 | 373.65 |
| 19 | 4.1.2.2 | EAS setup |  | 8d | 2024-12-01 A | 2024-12-10 A |  | 100% |  | 2024-12-01 | 2024-12-10 | 8d |  |  | IoT Specialist [85%]; System Administrator [80%]; Security Spaecialist [50%] | 137.6h | 137.6h | 2,513.43 | 2,513.43 | 2,513.43 |
| 20 | 4.1.3 | **Security implementation** |  | 4d | 2024-12-23 | 2024-12-26 | 17 |  |  | 2024-12-23 | 2024-12-26 | 4d | 0d |  |  | 73.6h |  | 1,266.72 | 1,266.72 |  |
| 21 | 4.1.3.1 | Data encryption |  | 4d | 2024-12-23 | 2024-12-26 |  |  |  | 2024-12-23 | 2024-12-26 | 4d | 0d |  | Backend Developers; Security Spaecialist [50%]; System Administrator [80%] | 73.6h |  | 1,266.72 | 1,266.72 |  |
| 22 | 4.2 | **Frontend** |  | 9d? | 2024-12-29 | 2025-01-09 | 12 |  |  | 2024-12-29 | 2025-01-09 | 9d? | 0d |  |  | 220h |  | 2,182.34 | 2,182.34 |  |
| 23 | 4.2.1 | **Customer interface** |  | 5d? | 2024-12-29 | 2025-01-05 |  |  |  | 2024-12-29 | 2025-01-05 | 5d? | 0d |  |  | 188h |  | 2,046.28 | 2,046.28 |  |
| 24 | 4.2.1.1 | Login/Registration page |  | 1d | 2024-12-29 | 2024-12-29 |  |  |  | 2024-12-29 | 2024-12-29 | 1d | 0d |  | Backend Developers; Security Spaecialist [50%]; System Administrator [80%]; UI Designers; UX Designers | 34.4h |  | 344.88 | 344.88 |  |
| 25 | 4.2.1.2 | Product scanner page |  | 2d | 2024-12-30 | 2024-12-31 | 24 |  |  | 2024-12-30 | 2024-12-31 | 2d | 0d |  | Backend Developers; IoT Specialist [85%]; Security Spaecialist [50%]; System Administrator [80%]; UI Designers; UX Designers | 82.4h |  | 723.16 | 723.16 |  |
| 26 | 4.2.1.3 | Shopping cart page |  | 2d | 2025-01-01 | 2025-01-02 | 25 |  |  | 2025-01-01 | 2025-01-02 | 2d | 0d |  | Backend Developers; Security Spaecialist [50%]; System Administrator [80%] | 36.8h |  | 633.36 | 633.36 |  |
| 27 | 4.2.1.4 | Receipt generation |  | 1d? | 2025-01-05 | 2025-01-05 | 26 |  |  | 2025-01-05 | 2025-01-05 | 1d? | 0d |  | Backend Developers; Security Spaecialist [50%]; System Administrator [80%]; UI Designers; UX Designers | 34.4h |  | 344.88 | 344.88 |  |

Notes:
- 10: after we finish this phase we do the test using the quality assurance tester and project manager do oveersees of the phase of the project that is completed then we meeting with owner and stackholders

| ID | WBS | Task | Type | Duration | Start | Finish | Predecessors | Complete | Baseline start | Baseline finish | Baseline duration | Total slack | Resources | Work | Cost | Baseline cost |
| --- | --- | --- | --- | --- | --- | --- | --- | --- | --- | --- | --- | --- | --- | --- | --- | --- |
| 28 | 4.2.2 | **Testing Frontend page** |  | 4d | 2025-01-06 | 2025-01-09 | 23 |  | 2025-01-06 | 2025-01-09 | 4d | 0d |  | 32h | 136.06 | 136.06 |
| 29 | 4.2.2.1 | Analysis Validation |  | 4d | 2025-01-06 | 2025-01-09 |  |  | 2025-01-06 | 2025-01-09 | 4d | 0d | Business Analyst | 32h | 136.06 | 136.06 |
| 30 | 5 | implementation completion | milestone | 0d | 2024-10-30 A | 2024-10-30 A |  | 100% | 2024-10-30 | 2024-10-30 | 0d |  |  |  |  |  |
| 31 | 6 | **Testing** |  | 14d | 2025-01-12 | 2025-01-30 | 22, 11, 30 |  | 2025-01-12 | 2025-01-30 | 14d | 0d |  | 376.8h | 3,530.7 | 3,530.7 |
| 32 | 6.1 | **User experience test** |  | 9d | 2025-01-12 | 2025-01-23 |  |  | 2025-01-12 | 2025-01-23 | 9d | 0d |  | 284.8h | 640.8 | 640.8 |
| 33 | 6.1.1 | simulation of real life at test |  | 7d | 2025-01-12 | 2025-01-20 |  |  | 2025-01-12 | 2025-01-20 | 7d | 0d | Backend Developers; UI Designers; UX Designers; System Administrator [80%] | 212.8h | 454.16 | 454.16 |
| 34 | 6.1.2 | Feedback collection |  | 3d | 2025-01-21 | 2025-01-23 | 33 |  | 2025-01-21 | 2025-01-23 | 3d | 0d | Business Analyst; UI Designers; UX Designers | 72h | 186.65 | 186.65 |
| 35 | 6.2 | **Security Testing** |  | 4d | 2025-01-26 | 2025-01-30 |  |  | 2025-01-26 | 2025-01-30 | 4d | 0d |  | 92h | 2,889.9 | 2,889.9 |
| 36 | 6.2.1 | Data breach simulations |  | 5d | 2025-01-26 | 2025-01-30 | 34 |  | 2025-01-26 | 2025-01-30 | 5d | 0d | DevOps Engineer; Security Spaecialist [50%]; System Administrator [80%] | 92h | 2,889.9 | 2,889.9 |
| 37 | 7 | testing completion | milestone | 0d | 2024-10-30 A | 2024-10-30 A |  | 100% | 2024-10-30 | 2024-10-30 | 0d |  |  |  |  |  |
| 38 | 8 | **Deployment** |  | 31d | 2025-02-02 | 2025-03-17 | 31, 37 |  | 2025-02-02 | 2025-03-17 | 31d | 0d |  | 938h | 9,806.77 | 9,806.77 |
| 39 | 8.1 | **Server Setup** |  | 4d | 2025-02-02 | 2025-02-06 |  |  | 2025-02-02 | 2025-02-06 | 4d | 0d |  | 146h | 1,614.05 | 1,614.05 |
| 40 | 8.1.1 | Cloud hosting configuration |  | 5d | 2025-02-02 | 2025-02-06 |  |  | 2025-02-02 | 2025-02-06 | 5d | 0d | DevOps Engineer; IT Specialist [85%]; Marketing Team; System Administrator [80%] | 146h | 1,614.05 | 1,614.05 |
| 41 | 8.2 | **deployment App** |  | 26d | 2025-02-09 | 2025-03-17 |  |  | 2025-02-09 | 2025-03-17 | 26d | 0d |  | 792h | 8,192.72 | 8,192.72 |
| 42 | 8.2.1 | Publish on App store and play store |  | 12d | 2025-02-09 | 2025-02-24 | 39 |  | 2025-02-09 | 2025-02-24 | 12d | 0d | Marketing Team; mobile app developer | 192h | 6,033.54 | 6,033.54 |
| 43 | 8.2.2 | Marketing |  | 3w | 2025-02-25 | 2025-03-17 | 42 |  | 2025-02-25 | 2025-03-17 | 3w | 0d | Business Analyst; Marketing Team; Project Manager; UI Designers; UX Designers | 600h | 2,159.18 | 2,159.18 |
| 44 | 9 | projct finished | milestone | 0d | 2024-10-30 A | 2024-10-30 A |  | 100% | 2024-10-30 | 2024-10-30 | 0d |  |  |  |  |  |
| 45 | 10 | **Post-Launch Support** |  | 0d | 2024-10-30 A | 2024-10-30 A |  | 100% | 2024-10-30 | 2024-10-30 | 0d |  |  |  |  |  |
| 46 | 10.1 | **Bug Fixes** |  | 0d | 2024-10-30 A | 2024-10-30 A |  | 100% | 2024-10-30 | 2024-10-30 | 0d |  |  |  |  |  |
| 47 | 10.1.1 | Monitor Error logs | milestone | 0d | 2024-10-30 A | 2024-10-30 A |  | 100% | 2024-10-30 | 2024-10-30 | 0d |  | Backend Developers; DevOps Engineer; System Administrator [80%] |  |  |  |
| 48 | 10.1.2 | Release patches | milestone | 0w | 2024-10-30 A | 2024-10-30 A | 47 | 100% | 2024-10-30 | 2024-10-30 | 0w |  | Backend Developers; DevOps Engineer; System Administrator [80%] |  |  |  |
| 49 | 10.2 | **Feature Enhancements** |  | 0d | 2024-10-30 A | 2024-10-30 A |  | 100% | 2024-10-30 | 2024-10-30 | 0d |  |  |  |  |  |
| 50 | 10.2.1 | Gather user feedback | milestone | 0w | 2024-10-30 A | 2024-10-30 A |  | 100% | 2024-10-30 | 2024-10-30 | 0w |  | Business Analyst; UI Designers; UX Designers |  |  |  |
| 51 | 10.2.2 | Plan additional features | milestone | 0w | 2024-10-30 A | 2024-10-30 A |  | 100% | 2024-10-30 | 2024-10-30 | 0w |  | Backend Developers; Business Analyst; Frontend Developers; UI Designers; UX Designers |  |  |  |

Notes:
- 30: after we finish this phase we do the test using the quality assurance tester and project manager do oveersees of the phase of the project that is completed then we meeting with owner and stackholders
- 37: after we finish this phase we do the test using the quality assurance tester and project manager do oveersees of the phase of the project that is completed then we meeting with owner and stackholders
- 44: after we finish this phase we do the test using the quality assurance tester and project manager do oveersees of the phase of the project that is completed then we meeting with owner and stackholders

| ID | WBS | Task | Type | Duration | Start | Finish | Complete | Baseline start | Baseline finish | Baseline duration | Resources |
| --- | --- | --- | --- | --- | --- | --- | --- | --- | --- | --- | --- |
| 52 | 10.3 | **Maintenance** |  | 0d | 2024-10-30 A | 2024-10-30 A | 100% | 2024-10-30 | 2024-10-30 | 0d |  |
| 53 | 10.3.1 | Regular updates | milestone | 0w | 2024-10-30 A | 2024-10-30 A | 100% | 2024-10-30 | 2024-10-30 | 0w | Backend Developers; DevOps Engineer; Frontend Developers; System Administrator [80%] |
| 54 | 10.3.2 | Security cycles | milestone | 0w | 2024-10-30 A | 2024-10-30 A | 100% | 2024-10-30 | 2024-10-30 | 0w | IT Specialist [85%]; Security Spaecialist [50%]; DevOps Engineer |
